# template_WBS

Schedule from MS Project, 2006-12-08 to 2007-03-16.
SENSA

## Calendars

- Estándar: Mon-Fri 09:00-13:00, 15:00-19:00; Sat-Sun off.

## Resources

| Resource |
| --- |
| LP |
| Analista |
| LD |
| ED |
| AC |
| Cliente |
| Administrador Configuracion |
| Admor Configuracion |
| Aseg. Calidad |
| Pruebas |
| DID |
| Admor Config Global |
| Aseg. Calida |
| Analits |
| c |
| Doc Sistemas |
| Alta Gerencia |
| Administrador del Proyecto |
| Comité de Estimación |
| Arquitecto |
| Lider de Prueba |
| Probador |
| Ing. de Software |
| Lider de Proyecto |
| ing |
| Documentador |
| Capacitador |
| Administrador de Configuracion |
| Admin. Conf. Del Proyecto |
| Admin. Conf. Org. |
| Resp. Q.A. |

## Schedule

| ID | WBS | Task | Duration | Start | Finish | Predecessors | Total slack | Free slack | Constraint | Resources | Work | Text1 |
| --- | --- | --- | --- | --- | --- | --- | --- | --- | --- | --- | --- | --- |
| 1 | 1 | **<Nombre del proyecto>** | 70.75d? | 2006-12-08 09:00 | 2007-03-16 17:00 |  | 0d |  |  |  | 722h |  |
| 2 | 1.1 | **Planeación Inicial** | 2.88d? | 2006-12-11 09:00 | 2006-12-13 18:00 |  | 1.75d |  |  |  | 25h | PP |
| 3 | 1.1.1 | **Propuesta de Negocio** | 2.75d? | 2006-12-11 09:00 | 2006-12-13 17:00 |  | 1.75d |  |  |  | 24h | PP |
| 4 | 1.1.1.1 | Efectuar el preestudio inicial | 1d? | 2006-12-11 09:00 | 2006-12-11 19:00 |  | 1.75d | 0d | start no earlier than 2006-12-11 09:00 | Alta Gerencia | 8h | PP |
| 5 | 1.1.1.2 | Estimar el esfuerzo, tiempo, costo y tamaño de los productos | 0.25d | 2006-12-12 09:00 | 2006-12-12 11:00 | 4 | 1.75d | 0d |  | Alta Gerencia; Comité de Estimación | 4h | PP |
| 6 | 1.1.1.3 | Determinar el calendario de trabajo de alto nivel (WBS) | 0.5d | 2006-12-12 11:00 | 2006-12-12 17:00 | 5 | 1.75d | 0d |  | Alta Gerencia | 4h | PP |
| 7 | 1.1.1.4 | Integrar la Propuesta de Negocio y/o el Contrato | 1d? | 2006-12-12 17:00 | 2006-12-13 17:00 | 6 | 1.75d | 0d |  | Alta Gerencia | 8h | PP |
| 8 | 1.1.2 | **Correo Electrónico de Asignacion Oficial del PM** | 0.12d | 2006-12-13 17:00 | 2006-12-13 18:00 |  | 1.75d |  |  |  | 1h |  |
| 9 | 1.1.2.1 | Asignar un Administrador del Proyecto | 0.12d | 2006-12-13 17:00 | 2006-12-13 18:00 | 7 | 1.75d | 0d |  | Alta Gerencia | 1h | PP |
| 10 | 1.2 | **Planeación del Proyecto** | 5.75d? | 2006-12-15 15:00 | 2006-12-25 11:00 |  | 1.75d |  |  |  | 44h | PMC |
| 11 | 1.2.1 | **Especificación del Proyecto** | 5.75d? | 2006-12-15 15:00 | 2006-12-25 11:00 |  | 1.75d |  |  |  | 44h | PP |
| 12 | 1.2.1.1 | Determinar el calendario de trabajo detallado | 0.5d | 2006-12-15 15:00 | 2006-12-15 19:00 | 97 | 1.75d | 0d |  | Administrador del Proyecto | 4h | PP |
| 13 | 1.2.1.2 | Revisar y actualizar los planes del proyecto | 0.5d | 2006-12-18 09:00 | 2006-12-18 13:00 | 12 | 1.75d | 0d |  | Administrador del Proyecto | 4h | PP |
| 14 | 1.2.1.3 | **Equipo de Trabajo** | 0.75d | 2006-12-19 09:00 | 2006-12-19 17:00 |  | 1.75d |  |  |  | 6h | PP |
| 15 | 1.2.1.3.1 | Gestionar los Recursos del Proyecto | 0.25d | 2006-12-19 09:00 | 2006-12-19 11:00 | 116 | 1.75d | 0d |  | Administrador del Proyecto | 2h | PP |
| 16 | 1.2.1.3.2 | Asignar el Equipo de Trabajo | 0.5d | 2006-12-19 11:00 | 2006-12-19 17:00 | 15 | 1.75d | 0d |  | Administrador del Proyecto | 4h | PP |
| 17 | 1.2.1.4 | **Documentos Anexos a la Especificación del Proyecto** | 1.25d | 2006-12-19 17:00 | 2006-12-20 19:00 |  | 1.75d |  |  |  | 10h | PP |
| 18 | 1.2.1.4.1 | Generar Matriz de Asuntos del Proyecto | 0.5d | 2006-12-19 17:00 | 2006-12-20 11:00 | 16 | 1.75d | 0d |  | Administrador del Proyecto | 4h | PMC |
| 19 | 1.2.1.4.2 | Generar Matriz de Administración de Riesgos | 0.5d | 2006-12-20 11:00 | 2006-12-20 17:00 | 18 | 1.75d | 0d |  | Administrador del Proyecto | 4h | RSK |
| 20 | 1.2.1.4.3 | Generar el WBS del Proyecto | 0.25d | 2006-12-20 17:00 | 2006-12-20 19:00 | 19 | 61.75d |  |  | Administrador del Proyecto | 2h |  |
| 21 | 1.2.1.5 | Integrar la Especificación del Proyecto | 1d? | 2006-12-20 17:00 | 2006-12-21 17:00 | 19 | 1.75d | 0d |  | Administrador del Proyecto | 8h | PP |
| 22 | 1.2.1.6 | Revisar la consistencia de los planes | 1d? | 2006-12-21 17:00 | 2006-12-22 17:00 | 21 | 1.75d | 0d |  | Administrador del Proyecto | 8h | PP |
| 23 | 1.2.1.7 | Obtener la aprobación de los participantes | 0.5d | 2006-12-22 17:00 | 2006-12-25 11:00 | 22 | 1.75d | 0d |  | Administrador del Proyecto | 4h | PP |
| 24 | 1.3 | **Análisis de Requerimientos** | 24.5d? | 2006-12-26 17:00 | 2007-01-30 11:00 |  | 1.75d |  |  |  | 196h | PMC |
| 25 | 1.3.1 | **Análisis de Requerimientos** | 23d? | 2006-12-26 17:00 | 2007-01-26 17:00 |  | 1.75d |  |  |  | 184h |  |
| 26 | 1.3.1.1 | **Documento de Requerimientos** | 12d? | 2006-12-26 17:00 | 2007-01-11 17:00 |  | 1.75d |  |  |  | 96h |  |
| 27 | 1.3.1.1.1 | Hacer el levantamiento de requerimientos | 5d | 2006-12-26 17:00 | 2007-01-02 17:00 | 100 | 1.75d | 0d |  | Analista | 40h |  |
| 28 | 1.3.1.1.2 | Desarrollar Prototipo (opcional) | 3d | 2007-01-02 17:00 | 2007-01-05 17:00 | 27 | 1.75d | 0d |  | Analista | 24h |  |
| 29 | 1.3.1.1.3 | Desarrollar la Visión | 0.5d | 2007-01-05 17:00 | 2007-01-08 11:00 | 28 | 1.75d | 0d |  | Analista | 4h |  |
| 30 | 1.3.1.1.4 | Desarrollar los requerimientos funcionales y suplementarios | 2d | 2007-01-08 11:00 | 2007-01-10 11:00 | 29 | 1.75d | 0d |  | Analista | 16h |  |
| 31 | 1.3.1.1.5 | Integrar el documento de requerimientos | 1d? | 2007-01-10 11:00 | 2007-01-11 11:00 | 30 | 1.75d | 0d |  | Analista | 8h |  |
| 32 | 1.3.1.1.6 | Validar el documento de vision y requerimientos con el cliente | 0.5d | 2007-01-11 11:00 | 2007-01-11 17:00 | 31 | 1.75d | 0d |  | Analista | 4h |  |

| ID | WBS | Task | Duration | Start | Finish | Predecessors | Total slack | Free slack | Resources | Work |
| --- | --- | --- | --- | --- | --- | --- | --- | --- | --- | --- |
| 33 | 1.3.1.2 | **Modelo de Casos de Uso** | 10d | 2007-01-11 17:00 | 2007-01-25 17:00 |  | 1.75d |  |  | 80h |
| 34 | 1.3.1.2.1 | Desarrollar el modelo de casos de uso | 5d | 2007-01-11 17:00 | 2007-01-18 17:00 | 32 | 1.75d | 0d | Analista | 40h |
| 35 | 1.3.1.2.2 | Detallar cada caso de uso | 5d | 2007-01-18 17:00 | 2007-01-25 17:00 | 34 | 1.75d | 0d | Analista | 40h |
| 36 | 1.3.1.3 | **Matriz de Rastreabilidad** | 1d? | 2007-01-25 17:00 | 2007-01-26 17:00 |  | 1.75d |  |  | 8h |
| 37 | 1.3.1.3.1 | Documentar la matriz de rastreabilidad | 1d? | 2007-01-25 17:00 | 2007-01-26 17:00 | 35 | 1.75d | 0d | Analista | 8h |
| 38 | 1.3.2 | **Actualizar la Planeación del Proyecto** | 1.5d | 2007-01-26 17:00 | 2007-01-30 11:00 |  | 1.75d |  |  | 12h |
| 39 | 1.3.2.1 | Revisar y actualizar las estimaciones en la herramienta de estimaciones | 0.5d | 2007-01-26 17:00 | 2007-01-29 11:00 | 37 | 1.75d | 0d | Administrador del Proyecto | 4h |
| 40 | 1.3.2.2 | Revisar y actualizar el WBS | 0.5d | 2007-01-29 11:00 | 2007-01-29 17:00 | 39 | 1.75d | 0d | Administrador del Proyecto | 4h |
| 41 | 1.3.2.3 | Revisar y actualizar la matriz de administración de riesgos | 0.5d | 2007-01-29 17:00 | 2007-01-30 11:00 | 40 | 1.75d | 0d | Administrador del Proyecto | 4h |
| 42 | 1.4 | **Ingeniería de la Solución** | 60d? | 2006-12-08 09:00 | 2007-03-01 19:00 |  | 10.75d |  |  | 264h |
| 43 | 1.4.1 | **Arquitectura de la Solución** | 4.5d? | 2007-02-01 11:00 | 2007-02-07 17:00 |  | 1.75d |  |  | 40h |
| 44 | 1.4.1.1 | Desarrollar el diseño general de la arquitectura | 1d? | 2007-02-01 11:00 | 2007-02-02 11:00 | 103 | 1.75d | 0d | Arquitecto | 8h |
| 45 | 1.4.1.2 | Desarrollar el modelo de clases | 1d? | 2007-02-02 11:00 | 2007-02-05 11:00 | 44 | 1.75d | 0d | Arquitecto | 8h |
| 46 | 1.4.1.3 | Desarrollar el modelo de la base de datos | 1d? | 2007-02-05 11:00 | 2007-02-06 11:00 | 45 | 1.75d | 0d | Arquitecto | 8h |
| 47 | 1.4.1.4 | Desarrollar las especificaciones de las interfases | 1d? | 2007-02-06 11:00 | 2007-02-07 11:00 | 46 | 1.75d | 0d | Arquitecto | 8h |
| 48 | 1.4.1.5 | Integrar el documento de Arquitectura y Actualizar la Matriz de Rastreabilidad | 0.5d? | 2007-02-07 11:00 | 2007-02-07 17:00 | 47 | 1.75d | 0d | Arquitecto; Analista | 8h |
| 49 | 1.4.2 | **Plan de Prueba** | 2d? | 2006-12-08 09:00 | 2006-12-11 19:00 |  | 44d |  |  | 24h |
| 50 | 1.4.2.1 | Definir los escenarios de prueba y Actualizar la Matriz de Rastreabilidad | 0.5d? | 2006-12-08 09:00 | 2006-12-08 13:00 |  | 44d | 0d | Lider de Prueba; Analista | 8h |
| 51 | 1.4.2.2 | Desarrollar los casos de prueba y Actualizar la Matriz de Rastreabilidad | 0.5d? | 2006-12-08 15:00 | 2006-12-08 19:00 | 50 | 44d | 0d | Lider de Prueba; Analista | 8h |
| 52 | 1.4.2.3 | Desarrollar los scripts de prueba | 1d? | 2006-12-11 09:00 | 2006-12-11 19:00 | 51 | 44d | 42.25d | Probador | 8h |
| 53 | 1.4.3 | **Construcción de la Solución** | 16.25d? | 2007-02-07 17:00 | 2007-03-01 19:00 |  | 1.75d |  |  | 200h |
| 54 | 1.4.3.1 | **Construcción de Ambientes** | 1d | 2007-02-07 17:00 | 2007-02-08 17:00 |  | 1.75d |  |  | 8h |
| 55 | 1.4.3.1.1 | Preparar el ambiente de desarrollo | 0.5d | 2007-02-07 17:00 | 2007-02-08 11:00 | 48 | 1.75d | 0d | Lider de Proyecto | 4h |
| 56 | 1.4.3.1.2 | Preparar el ambiente de prueba | 0.5d | 2007-02-08 11:00 | 2007-02-08 17:00 | 55, 52 | 1.75d | 0d | Lider de Proyecto | 4h |

| ID | WBS | Task | Duration | Start | Finish | Predecessors | Total slack | Free slack | Constraint | Resources | Work |
| --- | --- | --- | --- | --- | --- | --- | --- | --- | --- | --- | --- |
| 57 | 1.4.3.2 | **Incremento 1** | 5.25d | 2007-02-08 17:00 | 2007-02-15 19:00 |  | 1.75d |  |  |  | 44h |
| 58 | 1.4.3.2.1 | Desarrollo del Código y Prueba Unitaria | 3d | 2007-02-08 17:00 | 2007-02-13 17:00 | 56 | 1.75d | 0d |  | Ing. de Software | 24h |
| 59 | 1.4.3.2.2 | Liberación al ambiente de pruebas | 0.5d | 2007-02-13 17:00 | 2007-02-14 11:00 | 58 | 1.75d | 0d |  | Ing. de Software | 4h |
| 60 | 1.4.3.2.3 | Ejecución de la Prueba Funcional | 1d | 2007-02-14 11:00 | 2007-02-15 11:00 | 59 | 21.5d |  |  | Probador | 8h |
| 61 | 1.4.3.2.4 | Corregir defectos | 1d | 2007-02-15 09:00 | 2007-02-15 19:00 | 59 | 1d |  | start no earlier than 2007-02-15 09:00 | Ing. de Software | 8h |
| 62 | 1.4.3.3 | **Incremento 2** | 5d | 2007-02-09 09:00 | 2007-02-15 19:00 |  | 1.5d |  |  |  | 44h |
| 63 | 1.4.3.3.1 | Desarrollo del Código y Prueba Unitaria | 3d | 2007-02-09 09:00 | 2007-02-13 19:00 | 56 | 1.5d | 0d | start no earlier than 2007-02-09 09:00 | Ing. de Software | 24h |
| 64 | 1.4.3.3.2 | Liberación al ambiente de pruebas | 0.5d | 2007-02-14 09:00 | 2007-02-14 13:00 | 63 | 1.5d | 0d |  | Ing. de Software | 4h |
| 65 | 1.4.3.3.3 | Ejecución de la Prueba Funcional | 1d | 2007-02-14 15:00 | 2007-02-15 13:00 | 64 | 21.25d |  |  | Probador | 8h |
| 66 | 1.4.3.3.4 | Corregir defectos | 1d | 2007-02-15 09:00 | 2007-02-15 19:00 | 64 | 1d |  | start no earlier than 2007-02-15 09:00 | Ing. de Software | 8h |
| 67 | 1.4.3.4 | **Integración de la Solución** | 4d? | 2007-02-19 09:00 | 2007-02-22 19:00 |  | 0d |  |  |  | 56h |
| 68 | 1.4.3.4.1 | Realizar la Integración de la Solución | 1d? | 2007-02-19 09:00 | 2007-02-19 19:00 | 66, 61 | 0d |  | start no earlier than 2007-02-19 09:00 | Lider de Proyecto | 8h |
| 69 | 1.4.3.4.2 | Ejecutar la prueba de integración | 3d | 2007-02-20 09:00 | 2007-02-22 19:00 | 68 | 15.75d |  | start no earlier than 2007-02-19 09:00 | Probador | 24h |
| 70 | 1.4.3.4.3 | Corregir defectos | 3d | 2007-02-20 09:00 | 2007-02-22 19:00 | 68 | 0d |  | start no earlier than 2007-02-20 09:00 | Ing. de Software | 24h |
| 71 | 1.4.3.5 | **Documentación del Sistema** | 5d | 2007-02-23 09:00 | 2007-03-01 19:00 |  | 0d |  |  |  | 48h |
| 72 | 1.4.3.5.1 | Desarrollar el Manual del Usuario | 5d | 2007-02-23 09:00 | 2007-03-01 19:00 | 70 | 0d |  |  | Documentador | 40h |
| 73 | 1.4.3.5.2 | Desarrollar las Notas de Liberación | 0.5d | 2007-02-23 09:00 | 2007-02-23 13:00 | 70 | 4.5d |  |  | Lider de Proyecto | 4h |
| 74 | 1.4.3.5.3 | Desarrollar Scripts de Instalación | 0.5d | 2007-02-23 09:00 | 2007-02-23 13:00 | 70 | 4.5d |  |  | Ing. de Software | 4h |
| 75 | 1.5 | **Liberación de la Solución** | 6.75d? | 2007-03-08 09:00 | 2007-03-16 17:00 |  | 0d |  |  |  | 102h |
| 76 | 1.5.1 | **Instalación de la Solución** | 1d | 2007-03-08 09:00 | 2007-03-08 19:00 |  | 0d |  |  |  | 8h |
| 77 | 1.5.1.1 | Instalar el ambiente de Producción | 0.5d | 2007-03-08 09:00 | 2007-03-08 13:00 | 106 | 0d |  | start no earlier than 2007-02-05 09:00 | Ing. de Software | 4h |
| 78 | 1.5.1.2 | Instalar la solución | 0.5d | 2007-03-08 15:00 | 2007-03-08 19:00 | 77 | 0d |  |  | Ing. de Software | 4h |
| 79 | 1.5.2 | **Prueba de Aceptación** | 3d | 2007-03-09 09:00 | 2007-03-13 19:00 | 78 | 0d |  |  |  | 72h |
| 80 | 1.5.2.1 | Capacitar y dar soporte a la prueba de aceptación | 3d | 2007-03-09 09:00 | 2007-03-13 19:00 |  | 0d |  |  | Lider de Prueba | 24h |
| 81 | 1.5.2.2 | Corregir defectos | 3d | 2007-03-09 09:00 | 2007-03-13 19:00 | 78 | 0d |  |  | Ing. de Software | 24h |
| 82 | 1.5.2.3 | Actualizar documentación de usuario | 3d | 2007-03-09 09:00 | 2007-03-13 19:00 | 78 | 0d |  | start no earlier than 2007-03-06 09:00 | Documentador | 24h |

| ID | WBS | Task | Duration | Start | Finish | Predecessors | Total slack | Free slack | Constraint | Resources | Work | Text1 |
| --- | --- | --- | --- | --- | --- | --- | --- | --- | --- | --- | --- | --- |
| 83 | 1.5.3 | **Entrega** | 2d? | 2007-03-14 09:00 | 2007-03-15 19:00 |  | 0d |  |  |  | 16h |  |
| 84 | 1.5.3.1 | Capacitar Usuarios | 1d? | 2007-03-14 09:00 | 2007-03-14 19:00 | 81, 80, 82 | 0d |  | start no earlier than 2007-01-30 09:00 | Capacitador | 8h |  |
| 85 | 1.5.3.2 | Generar el documento de aceptación | 0.5d | 2007-03-15 09:00 | 2007-03-15 13:00 | 84 | 0d |  | start no earlier than 2007-01-31 09:00 | Administrador del Proyecto | 4h |  |
| 86 | 1.5.3.3 | Entregar físicamente los entregables comprometidos | 0.25d | 2007-03-15 15:00 | 2007-03-15 17:00 | 85 | 0d |  |  | Administrador del Proyecto | 2h |  |
| 87 | 1.5.3.4 | Obtener la firma de aceptación del usuario | 0.25d | 2007-03-15 17:00 | 2007-03-15 19:00 | 86 | 0d |  |  | Administrador del Proyecto | 2h |  |
| 88 | 1.5.4 | **Cierre del Proyecto** | 0.75d | 2007-03-16 09:00 | 2007-03-16 17:00 |  | 0d |  |  |  | 6h |  |
| 89 | 1.5.4.1 | Reunion de Postmortem | 0.25d | 2007-03-16 09:00 | 2007-03-16 11:00 | 87 | 0d |  |  | Administrador del Proyecto | 2h |  |
| 90 | 1.5.4.2 | Reunion de Cierre Interno | 0.25d | 2007-03-16 11:00 | 2007-03-16 13:00 | 89 | 0d |  | start no earlier than 2007-02-05 09:00 | Administrador del Proyecto | 2h |  |
| 91 | 1.5.4.3 | Aplicación de Encuesta de Satisfacción | 0.25d | 2007-03-16 15:00 | 2007-03-16 17:00 | 90 | 0d |  | start no earlier than 2007-02-05 09:00 | Administrador del Proyecto | 2h |  |
| 92 | 1.6 | **Tareas de Soporte a la Ejecucución del Proyecto** | 64d? | 2006-12-08 09:00 | 2007-03-07 19:00 |  | 5.62d |  |  |  | 91h |  |
| 93 | 1.6.1 | **Control y Seguimiento** | 63d | 2006-12-11 09:00 | 2007-03-07 19:00 |  | 4.75d |  |  |  | 46h |  |
| 94 | 1.6.1.1 | **Milestones** | 60d | 2006-12-14 09:00 | 2007-03-07 19:00 |  | 0d |  |  |  | 32h |  |
| 95 | 1.6.1.1.1 | **Reporte del MS1** | 1.5d | 2006-12-14 09:00 | 2006-12-15 13:00 |  | 1.75d |  |  |  | 8h |  |
| 96 | 1.6.1.1.1.1 | Preparar Milestone MS1 | 0.5d | 2006-12-14 09:00 | 2006-12-14 13:00 | 115 | 1.75d | 0d |  | Administrador del Proyecto | 4h |  |
| 97 | 1.6.1.1.1.2 | Documentar el reporte del MS1 | 0.5d | 2006-12-15 09:00 | 2006-12-15 13:00 | 117 | 1.75d | 0d |  | Administrador del Proyecto | 4h |  |
| 98 | 1.6.1.1.2 | **Reporte del MS2** | 1.5d | 2006-12-25 11:00 | 2006-12-26 17:00 |  | 1.75d |  |  |  | 8h |  |
| 99 | 1.6.1.1.2.1 | Preparar Milestone MS2 | 0.5d | 2006-12-25 11:00 | 2006-12-25 17:00 | 23 | 1.75d | 0d |  | Administrador del Proyecto | 4h | PMC |
| 100 | 1.6.1.1.2.2 | Documentar el reporte del MS2 | 0.5d | 2006-12-26 11:00 | 2006-12-26 17:00 | 118 | 1.75d | 0d |  | Administrador del Proyecto | 4h | PMC |
| 101 | 1.6.1.1.3 | **Reporte del MS3** | 2d | 2007-01-30 11:00 | 2007-02-01 11:00 |  | 1.75d |  |  |  | 8h |  |
| 102 | 1.6.1.1.3.1 | Preparar Milestone MS3 | 0.5d | 2007-01-30 11:00 | 2007-01-30 17:00 | 41 | 1.75d | 0d | start no earlier than 2007-01-22 09:00 | Administrador del Proyecto | 4h |  |
| 103 | 1.6.1.1.3.2 | Documentar el reporte del MS3 | 0.5d | 2007-01-31 17:00 | 2007-02-01 11:00 | 119 | 1.75d | 0d |  | Administrador del Proyecto | 4h |  |
| 104 | 1.6.1.1.4 | **Reporte del MS4** | 4d | 2007-03-02 09:00 | 2007-03-07 19:00 |  | 0d |  |  |  | 8h |  |
| 105 | 1.6.1.1.4.1 | Preparar Milestone MS4 | 0.5d | 2007-03-02 09:00 | 2007-03-02 13:00 | 74, 73, 72 | 0d |  | start no earlier than 2007-02-05 09:00 | Administrador del Proyecto | 4h |  |
| 106 | 1.6.1.1.4.2 | Documentar el reporte del MS4 | 0.5d | 2007-03-07 15:00 | 2007-03-07 19:00 | 121 | 0d |  |  | Administrador del Proyecto | 4h |  |

| ID | WBS | Task | Duration | Start | Finish | Predecessors | Total slack | Free slack | Constraint | Resources | Work |
| --- | --- | --- | --- | --- | --- | --- | --- | --- | --- | --- | --- |
| 107 | 1.6.1.2 | **Reunión de Revisión Interna** | 1.75d | 2006-12-11 09:00 | 2006-12-12 17:00 |  | 68d |  |  |  | 14h |
| 108 | 1.6.1.2.1 | Llevar a cabo la reunión de seguimiento | 0.25d | 2006-12-11 09:00 | 2006-12-11 11:00 |  | 68d | 0d | start no earlier than 2006-12-11 09:00 | Administrador del Proyecto | 2h |
| 109 | 1.6.1.2.2 | Generar la minuta de la reunión | 0.25d | 2006-12-11 11:00 | 2006-12-11 13:00 | 108 | 68d | 0d |  | Administrador del Proyecto | 2h |
| 110 | 1.6.1.2.3 | Actualizar el WBS | 0.25d | 2006-12-11 15:00 | 2006-12-11 17:00 | 109 | 68d | 0d |  | Administrador del Proyecto | 2h |
| 111 | 1.6.1.2.4 | Actualizar la matriz de riesgos | 0.25d | 2006-12-11 17:00 | 2006-12-11 19:00 | 110 | 68d | 0d |  | Administrador del Proyecto | 2h |
| 112 | 1.6.1.2.5 | Actualizar la Bitácora de Asuntos del Proyecto | 0.25d | 2006-12-12 09:00 | 2006-12-12 11:00 | 111 | 68d | 0d |  | Administrador del Proyecto | 2h |
| 113 | 1.6.1.2.6 | Preparar el Reporte de Avance del Proyecto | 0.5d | 2006-12-12 11:00 | 2006-12-12 17:00 | 112 | 68d |  |  | Administrador del Proyecto | 4h |
| 114 | 1.6.2 | **Admnistración de la Configuración** | 59.62d | 2006-12-13 18:00 | 2007-03-07 13:00 |  | 0d |  |  |  | 45h |
| 115 | 1.6.2.1 | Crear el repositorio del proyecto | 0.12d | 2006-12-13 18:00 | 2006-12-13 19:00 | 9 | 1.75d | 0d |  | Admin. Conf. Del Proyecto | 1h |
| 116 | 1.6.2.2 | Documentar el Plan de Administración de la Configuración del Proyecto | 0.5d | 2006-12-18 15:00 | 2006-12-18 19:00 | 13 | 1.75d | 0d |  | Admin. Conf. Del Proyecto | 4h |
| 117 | 1.6.2.3 | Llevar a cabo la auditoría física de la configuración (LB Planeación) | 0.5d | 2006-12-14 15:00 | 2006-12-14 19:00 | 96 | 1.75d | 0d |  | Admin. Conf. Org. | 4h |
| 118 | 1.6.2.4 | Llevar a cabo la auditoría física de la configuración (LB Análisis) | 0.5d | 2006-12-25 17:00 | 2006-12-26 11:00 | 99 | 1.75d | 0d |  | Admin. Conf. Org. | 4h |
| 119 | 1.6.2.5 | Llevar a cabo la auditoría física de la configuración (LB Ingeniería) | 1d | 2007-01-30 17:00 | 2007-01-31 17:00 | 102 | 1.75d | 0d |  | Admin. Conf. Org. | 8h |
| 120 | 1.6.2.6 | Llevar a cabo la auditoría física de la configuración (LB Liberación) | 2d | 2007-03-02 15:00 | 2007-03-06 13:00 | 105 | 0d |  |  | Admin. Conf. Org. | 16h |
| 121 | 1.6.2.7 | Llevar a cabo la auditoría funcional de la configuración | 1d | 2007-03-06 15:00 | 2007-03-07 13:00 | 120 | 0d |  |  | Resp. Q.A. | 8h |
| 122 | 1.6.3 | Aseguramiento de la Calidad del Proceso | 1d? | 2006-12-08 09:00 | 2006-12-08 19:00 |  | 69.75d |  |  |  |  |
